# Cronograma de Implementacion

Schedule from MS Project, 2008-12-02 to 2009-02-07, costs in $b, A marks actual dates.

## Calendars

- Estándar: Mon-Fri 09:00-13:00, 15:00-19:00; Sat-Sun off. Exceptions (off unless hours are given): 2008-12-01 to 2008-12-05 08:00-09:00, 2008-12-06 09:00-13:00, 2008-12-08 to 2008-12-12 08:00-09:00, 2008-12-13 09:00-13:00, 2008-12-15 to 2008-12-19 08:00-09:00, 2008-12-20 09:00-13:00, 2008-12-22 to 2008-12-27 20:00-23:00, 2008-12-29 to 2009-01-03 20:00-23:00, 2009-01-05 to 2009-01-10 20:00-23:00, 2009-01-12 to 2009-01-17 20:00-23:00, 2009-01-19 to 2009-01-24 20:00-23:00, 2009-01-26 to 2009-01-31 20:00-23:00, 2009-02-02 to 2009-02-07 20:00-23:00.

## Resources

| Resource | Rate |
| --- | --- |
| Sergio Moreno | 100 |
| Servidor |  |
| Licencias Microsoft |  |

## Schedule

| ID | WBS | Task | Duration | Start | Finish | Predecessors | Complete | Remaining | Baseline start | Baseline finish | Baseline duration | Total slack | Free slack | Resources | Work | Actual work | Cost | Actual cost |
| --- | --- | --- | --- | --- | --- | --- | --- | --- | --- | --- | --- | --- | --- | --- | --- | --- | --- | --- |
| 1 | 1 | **DATAWAREHOUSE MENDOCINA-PEDIDOS** | 18.88d | 2008-12-02 08:00 A | 2009-02-07 22:00 |  | 21% | 14.89d |  |  |  | 0d |  |  | 221h | 63.8h | 22,100 | 6,380 |
| 2 | 1.1 | **Diseño de la Extraccion de Datos** | 3d | 2008-12-02 08:00 A | 2008-12-20 11:00 |  | 80% | 0.6d | 2008-12-02 08:00 | 2008-12-20 11:00 | 3d | 0.53d | 0d | Sergio Moreno | 48h | 38.4h | 4,800 | 3,840 |
| 3 | 1.1.1 | Configuracion inicial ambiente de desarrollo | 4h | 2008-12-02 08:00 A | 2008-12-05 09:00 A |  | 100% |  | 2008-12-02 08:00 | 2008-12-05 09:00 | 4h |  |  | Sergio Moreno | 4h | 4h | 400 | 400 |
| 4 | 1.1.2 | Maestro de Artículos | 1h | 2008-12-06 09:00 A | 2008-12-06 10:00 A | 3 | 100% |  | 2008-12-06 09:00 | 2008-12-06 10:00 | 1h |  |  | Sergio Moreno | 1h | 1h | 100 | 100 |
| 5 | 1.1.3 | Maestro de Distribuidores | 1h | 2008-12-06 10:00 A | 2008-12-06 11:00 A | 4 | 100% |  | 2008-12-06 10:00 | 2008-12-06 11:00 | 1h |  |  | Sergio Moreno | 1h | 1h | 100 | 100 |
| 6 | 1.1.4 | Maestro de Vendedores | 1h | 2008-12-06 11:00 A | 2008-12-06 12:00 A | 5 | 100% |  | 2008-12-06 11:00 | 2008-12-06 12:00 | 1h |  |  | Sergio Moreno | 1h | 1h | 100 | 100 |
| 7 | 1.1.5 | Maestro de Sabores | 1h | 2008-12-06 12:00 A | 2008-12-06 13:00 A | 6 | 100% |  | 2008-12-06 12:00 | 2008-12-06 13:00 | 1h |  |  | Sergio Moreno | 1h | 1h | 100 | 100 |
| 8 | 1.1.6 | Maestro de Líneas | 1h | 2008-12-08 08:00 A | 2008-12-08 09:00 A | 7 | 100% |  | 2008-12-08 08:00 | 2008-12-08 09:00 | 1h |  |  | Sergio Moreno | 1h | 1h | 100 | 100 |
| 9 | 1.1.7 | Maestro de Distritos | 1h | 2008-12-09 08:00 A | 2008-12-09 09:00 A | 8 | 100% |  | 2008-12-09 08:00 | 2008-12-09 09:00 | 1h |  |  | Sergio Moreno | 1h | 1h | 100 | 100 |
| 10 | 1.1.8 | Maestro de Rutas | 1h | 2008-12-10 08:00 A | 2008-12-10 09:00 A | 9 | 100% |  | 2008-12-10 08:00 | 2008-12-10 09:00 | 1h |  |  | Sergio Moreno | 1h | 1h | 100 | 100 |
| 11 | 1.1.9 | Maestro de Sectores | 1h | 2008-12-11 08:00 A | 2008-12-11 09:00 A | 10 | 100% |  | 2008-12-11 08:00 | 2008-12-11 09:00 | 1h |  |  | Sergio Moreno | 1h | 1h | 100 | 100 |
| 12 | 1.1.10 | Maestro de Clientes | 1h | 2008-12-12 08:00 A | 2008-12-12 09:00 A | 11 | 100% |  | 2008-12-12 08:00 | 2008-12-12 09:00 | 1h |  |  | Sergio Moreno | 1h | 1h | 100 | 100 |
| 13 | 1.1.11 | Maestro Clientes - Precios | 1h | 2008-12-13 09:00 A | 2008-12-13 10:00 A | 12 | 100% |  | 2008-12-13 09:00 | 2008-12-13 10:00 | 1h |  |  | Sergio Moreno | 1h | 1h | 100 | 100 |
| 14 | 1.1.12 | Transaccional de Pedidos | 4h | 2008-12-13 10:00 A | 2008-12-15 09:00 A | 13 | 100% |  | 2008-12-13 10:00 | 2008-12-15 09:00 | 4h |  |  | Sergio Moreno | 4h | 4h | 400 | 400 |
| 15 | 1.1.13 | Validacion de la informacion (congruencia) | 6h | 2008-12-16 08:00 A | 2008-12-20 11:00 | 14 | 20% | 4.8h | 2008-12-16 08:00 | 2008-12-20 11:00 | 6h | 0.53d |  | Sergio Moreno | 6h | 1.2h | 600 | 120 |
| 16 | 1.2 | **Diseño de la Transformacion de Datos** | 2.75d | 2008-12-20 11:00 A | 2008-12-29 22:00 |  | 58% | 1.16d | 2008-12-20 11:00 | 2008-12-29 22:00 | 2.75d | 0d |  | Sergio Moreno | 44h | 25.4h | 4,400 | 2,540 |
| 17 | 1.2.1 | Dimension de Fecha | 3h | 2008-12-20 11:00 A | 2008-12-22 21:00 A | 2 | 100% |  | 2008-12-20 11:00 | 2008-12-22 21:00 | 3h |  |  | Sergio Moreno | 3h | 3h | 300 | 300 |
| 18 | 1.2.2 | Dimension de Clientes | 6h | 2008-12-22 21:00 A | 2008-12-24 21:00 | 17 | 95% | 0.3h | 2008-12-22 21:00 | 2008-12-24 21:00 | 6h | 0.04d | 0d | Sergio Moreno | 6h | 5.7h | 600 | 570 |
| 19 | 1.2.3 | Dimension Distrito Ruta Sector | 2h | 2008-12-24 21:00 A | 2008-12-24 23:00 A | 18 | 100% |  | 2008-12-24 21:00 | 2008-12-24 23:00 | 2h |  |  | Sergio Moreno | 2h | 2h | 200 | 200 |
| 20 | 1.2.4 | Dimension Linea Sabor Articulo | 2h | 2008-12-25 20:00 A | 2008-12-25 22:00 A | 19 | 100% |  | 2008-12-25 20:00 | 2008-12-25 22:00 | 2h |  |  | Sergio Moreno | 2h | 2h | 200 | 200 |
| 21 | 1.2.5 | Dimension Distribuidor | 1h | 2008-12-25 22:00 | 2008-12-25 23:00 | 20 |  |  | 2008-12-25 22:00 | 2008-12-25 23:00 | 1h | 0d |  | Sergio Moreno | 1h |  | 100 |  |
| 22 | 1.2.6 | Dimensiorn Estado de pedido | 1h | 2008-12-26 20:00 | 2008-12-26 21:00 | 21 |  |  | 2008-12-26 20:00 | 2008-12-26 21:00 | 1h | 0d |  | Sergio Moreno | 1h |  | 100 |  |
| 23 | 1.2.7 | Dimension Jefe Supervisor Vendedor | 2h | 2008-12-26 21:00 | 2008-12-26 23:00 | 22 |  |  | 2008-12-26 21:00 | 2008-12-26 23:00 | 2h | 0d |  | Sergio Moreno | 2h |  | 200 |  |
| 24 | 1.2.8 | Tabla de Hechos: Pedidos | 5h | 2008-12-27 20:00 | 2008-12-29 22:00 | 23 |  |  | 2008-12-27 20:00 | 2008-12-29 22:00 | 5h | 0d |  | Sergio Moreno | 5h |  | 500 |  |

| ID | WBS | Task | Duration | Start | Finish | Predecessors | Baseline start | Baseline finish | Baseline duration | Total slack | Resources | Work | Cost |
| --- | --- | --- | --- | --- | --- | --- | --- | --- | --- | --- | --- | --- | --- |
| 25 | 1.3 | **Diseño del cargado de datos** | 1.25d | 2008-12-29 22:00 | 2009-01-01 23:00 |  | 2008-12-29 22:00 | 2009-01-01 23:00 | 1.25d | 0d | Sergio Moreno | 20h | 2,000 |
| 26 | 1.3.1 | Cubo: PEDIDOS | 5h | 2008-12-29 22:00 | 2008-12-31 21:00 | 16 | 2008-12-29 22:00 | 2008-12-31 21:00 | 5h | 0d | Sergio Moreno | 5h | 500 |
| 27 | 1.3.2 | Medida Cantidad de Pedidos | 1h | 2008-12-31 21:00 | 2008-12-31 22:00 | 26 | 2008-12-31 21:00 | 2008-12-31 22:00 | 1h | 0d | Sergio Moreno | 1h | 100 |
| 28 | 1.3.3 | Medida Cantidad de clientes | 2h | 2008-12-31 22:00 | 2009-01-01 21:00 | 27 | 2008-12-31 22:00 | 2009-01-01 21:00 | 2h | 0d | Sergio Moreno | 2h | 200 |
| 29 | 1.3.4 | Medida Monto de los pedidos | 2h | 2009-01-01 21:00 | 2009-01-01 23:00 | 28 | 2009-01-01 21:00 | 2009-01-01 23:00 | 2h | 0d | Sergio Moreno | 2h | 200 |
| 30 | 1.4 | **Diseño de Informes en excel** | 0.25d | 2009-01-02 20:00 | 2009-01-02 22:00 |  | 2009-01-02 20:00 | 2009-01-02 22:00 | 0.25d | 0d | Sergio Moreno | 4h | 400 |
| 31 | 1.4.1 | Layout de ejemplo | 2h | 2009-01-02 20:00 | 2009-01-02 22:00 | 29 | 2009-01-02 20:00 | 2009-01-02 22:00 | 2h | 0d | Sergio Moreno | 2h | 200 |
| 32 | 1.5 | **Creacion de reportes adicionales en Reporting Services** | 1.5d | 2009-01-02 22:00 | 2009-01-07 22:00 |  | 2009-01-02 22:00 | 2009-01-07 22:00 | 1.5d | 0d | Sergio Moreno | 24h | 2,400 |
| 33 | 1.5.1 | Informe Clientes por fecha | 4h | 2009-01-02 22:00 | 2009-01-03 23:00 | 31 | 2009-01-02 22:00 | 2009-01-03 23:00 | 4h | 0d | Sergio Moreno | 4h | 400 |
| 34 | 1.5.2 | Informe a medida 2 | 4h | 2009-01-05 20:00 | 2009-01-06 21:00 | 33 | 2009-01-05 20:00 | 2009-01-06 21:00 | 4h | 0d | Sergio Moreno | 4h | 400 |
| 35 | 1.5.3 | Informe a medida 3 | 4h | 2009-01-06 21:00 | 2009-01-07 22:00 | 34 | 2009-01-06 21:00 | 2009-01-07 22:00 | 4h | 0d | Sergio Moreno | 4h | 400 |
| 36 | 1.6 | Instalacion y configuracion del nuevo servidor | 8h | 2009-01-07 22:00 | 2009-01-10 21:00 | 35 | 2009-01-07 22:00 | 2009-01-10 21:00 | 8h | 0d | Sergio Moreno | 8h | 800 |
| 37 | 1.7 | Preparacion de Manual y Presentacion a los usuarios | 12h | 2009-01-10 21:00 | 2009-01-15 21:00 | 36 | 2009-01-10 21:00 | 2009-01-15 21:00 | 12h | 0d | Sergio Moreno | 12h | 1,200 |
| 38 | 1.8 | Presentacion y entrega de las capacidades de la nueva herramienta | 1h | 2009-01-15 21:00 | 2009-01-15 22:00 | 37 | 2009-01-15 21:00 | 2009-01-15 22:00 | 1h | 0d | Sergio Moreno | 1h | 100 |
| 39 | 1.9 | Requerimientos / Correcciones adicionales | 24h | 2009-01-15 22:00 | 2009-01-24 22:00 | 38 | 2009-01-15 22:00 | 2009-01-24 22:00 | 24h | 0d | Sergio Moreno | 24h | 2,400 |
| 40 | 1.10 | Capacitacion a usuarios finales para explotacion usando Excel 2007 | 24h | 2009-01-24 22:00 | 2009-02-03 22:00 | 39 | 2009-01-24 22:00 | 2009-02-03 22:00 | 24h | 0d | Sergio Moreno | 24h | 2,400 |
| 41 | 1.11 | Capacitacion a sistemas para mantenimiento de los flujos | 12h | 2009-02-03 22:00 | 2009-02-07 22:00 | 40 | 2009-02-03 22:00 | 2009-02-07 22:00 | 12h | 0d | Sergio Moreno | 12h | 1,200 |
