# Cronograma de Implementacion

Schedule from MS Project, 2008-12-02 to 2009-01-16, costs in $b, A marks actual dates.

## Calendars

- Estándar: Mon-Fri 09:00-13:00, 15:00-19:00; Sat-Sun off. Exceptions (off unless hours are given): 2008-12-01 to 2008-12-05 08:00-09:00, 2008-12-06 09:00-13:00, 2008-12-08 to 2008-12-12 08:00-09:00, 2008-12-13 09:00-13:00, 2008-12-15 to 2008-12-19 08:00-09:00, 2008-12-20 09:00-13:00, 2008-12-22 to 2008-12-27 20:00-23:00, 2008-12-29 to 2009-01-03 20:00-23:00, 2009-01-05 to 2009-01-10 20:00-23:00, 2009-01-12 to 2009-01-17 20:00-23:00.

## Resources

| Resource | Rate |
| --- | --- |
| Sergio Moreno | 100 |
| Servidor |  |
| Licencias Microsoft |  |

## Schedule

| ID | WBS | Task | Duration | Start | Finish | Predecessors | Complete | Remaining | Baseline start | Baseline finish | Baseline duration | Total slack | Free slack | Resources | Work | Actual work | Cost | Actual cost |
| --- | --- | --- | --- | --- | --- | --- | --- | --- | --- | --- | --- | --- | --- | --- | --- | --- | --- | --- |
| 1 | 1 | **DATAWAREHOUSE MENDOCINA-PEDIDOS** | 11.88d | 2008-12-02 08:00 A | 2009-01-16 23:00 |  | 64% | 4.3d |  |  |  | 0d |  |  | 157h | 115.6h | 15,700 | 11,560 |
| 2 | 1.1 | **Diseño de la Extraccion de Datos** | 3d | 2008-12-02 08:00 A | 2008-12-20 11:00 |  | 98% | 0.07d | 2008-12-02 08:00 | 2008-12-20 11:00 | 3d | 8.88d |  | Sergio Moreno | 48h | 46.8h | 4,800 | 4,680 |
| 3 | 1.1.1 | Configuracion inicial ambiente de desarrollo | 4h | 2008-12-02 08:00 A | 2008-12-05 09:00 A |  | 100% |  | 2008-12-02 08:00 | 2008-12-05 09:00 | 4h |  |  | Sergio Moreno | 4h | 4h | 400 | 400 |
| 4 | 1.1.2 | Maestro de Artículos | 1h | 2008-12-06 09:00 A | 2008-12-06 10:00 A | 3 | 100% |  | 2008-12-06 09:00 | 2008-12-06 10:00 | 1h |  |  | Sergio Moreno | 1h | 1h | 100 | 100 |
| 5 | 1.1.3 | Maestro de Distribuidores | 1h | 2008-12-06 10:00 A | 2008-12-06 11:00 A | 4 | 100% |  | 2008-12-06 10:00 | 2008-12-06 11:00 | 1h |  |  | Sergio Moreno | 1h | 1h | 100 | 100 |
| 6 | 1.1.4 | Maestro de Vendedores | 1h | 2008-12-06 11:00 A | 2008-12-06 12:00 A | 5 | 100% |  | 2008-12-06 11:00 | 2008-12-06 12:00 | 1h |  |  | Sergio Moreno | 1h | 1h | 100 | 100 |
| 7 | 1.1.5 | Maestro de Sabores | 1h | 2008-12-06 12:00 A | 2008-12-06 13:00 A | 6 | 100% |  | 2008-12-06 12:00 | 2008-12-06 13:00 | 1h |  |  | Sergio Moreno | 1h | 1h | 100 | 100 |
| 8 | 1.1.6 | Maestro de Líneas | 1h | 2008-12-08 08:00 A | 2008-12-08 09:00 A | 7 | 100% |  | 2008-12-08 08:00 | 2008-12-08 09:00 | 1h |  |  | Sergio Moreno | 1h | 1h | 100 | 100 |
| 9 | 1.1.7 | Maestro de Distritos | 1h | 2008-12-09 08:00 A | 2008-12-09 09:00 A | 8 | 100% |  | 2008-12-09 08:00 | 2008-12-09 09:00 | 1h |  |  | Sergio Moreno | 1h | 1h | 100 | 100 |
| 10 | 1.1.8 | Maestro de Rutas | 1h | 2008-12-10 08:00 A | 2008-12-10 09:00 A | 9 | 100% |  | 2008-12-10 08:00 | 2008-12-10 09:00 | 1h |  |  | Sergio Moreno | 1h | 1h | 100 | 100 |
| 11 | 1.1.9 | Maestro de Sectores | 1h | 2008-12-11 08:00 A | 2008-12-11 09:00 A | 10 | 100% |  | 2008-12-11 08:00 | 2008-12-11 09:00 | 1h |  |  | Sergio Moreno | 1h | 1h | 100 | 100 |
| 12 | 1.1.10 | Maestro de Clientes | 1h | 2008-12-12 08:00 A | 2008-12-12 09:00 A | 11 | 100% |  | 2008-12-12 08:00 | 2008-12-12 09:00 | 1h |  |  | Sergio Moreno | 1h | 1h | 100 | 100 |
| 13 | 1.1.11 | Maestro Clientes - Precios | 1h | 2008-12-13 09:00 A | 2008-12-13 10:00 A | 12 | 100% |  | 2008-12-13 09:00 | 2008-12-13 10:00 | 1h |  |  | Sergio Moreno | 1h | 1h | 100 | 100 |
| 14 | 1.1.12 | Transaccional de Pedidos | 4h | 2008-12-13 10:00 A | 2008-12-15 09:00 A | 13 | 100% |  | 2008-12-13 10:00 | 2008-12-15 09:00 | 4h |  |  | Sergio Moreno | 4h | 4h | 400 | 400 |
| 15 | 1.1.13 | Validacion de la informacion (congruencia) | 6h | 2008-12-16 08:00 A | 2008-12-20 11:00 | 14 | 90% | 0.6h | 2008-12-16 08:00 | 2008-12-20 11:00 | 6h | 8.88d |  | Sergio Moreno | 6h | 5.4h | 600 | 540 |
| 16 | 1.2 | **Diseño de la Transformacion de Datos** | 2.75d | 2008-12-20 11:00 A | 2008-12-29 22:00 |  | 98% | 0.05d | 2008-12-20 11:00 | 2008-12-29 22:00 | 2.75d | 6.12d |  | Sergio Moreno | 44h | 43.2h | 4,400 | 4,320 |
| 17 | 1.2.1 | Dimension de Fecha | 3h | 2008-12-20 11:00 A | 2008-12-22 21:00 A | 2 | 100% |  | 2008-12-20 11:00 | 2008-12-22 21:00 | 3h |  |  | Sergio Moreno | 3h | 3h | 300 | 300 |
| 18 | 1.2.2 | Dimension de Clientes | 6h | 2008-12-22 21:00 A | 2008-12-24 21:00 A | 17 | 100% |  | 2008-12-22 21:00 | 2008-12-24 21:00 | 6h |  |  | Sergio Moreno | 6h | 6h | 600 | 600 |
| 19 | 1.2.3 | Dimension Distrito Ruta Sector | 2h | 2008-12-24 21:00 A | 2008-12-24 23:00 A | 18 | 100% |  | 2008-12-24 21:00 | 2008-12-24 23:00 | 2h |  |  | Sergio Moreno | 2h | 2h | 200 | 200 |
| 20 | 1.2.4 | Dimension Linea Sabor Articulo | 2h | 2008-12-25 20:00 A | 2008-12-25 22:00 A | 19 | 100% |  | 2008-12-25 20:00 | 2008-12-25 22:00 | 2h |  |  | Sergio Moreno | 2h | 2h | 200 | 200 |
| 21 | 1.2.5 | Dimension Distribuidor | 1h | 2008-12-25 22:00 A | 2008-12-25 23:00 A | 20 | 100% |  | 2008-12-25 22:00 | 2008-12-25 23:00 | 1h |  |  | Sergio Moreno | 1h | 1h | 100 | 100 |
| 22 | 1.2.6 | Dimensiorn Estado de pedido | 1h | 2008-12-26 20:00 A | 2008-12-26 21:00 A | 21 | 100% |  | 2008-12-26 20:00 | 2008-12-26 21:00 | 1h |  |  | Sergio Moreno | 1h | 1h | 100 | 100 |
| 23 | 1.2.7 | Dimension Jefe Supervisor Vendedor | 2h | 2008-12-26 21:00 A | 2008-12-26 23:00 | 22 | 80% | 0.4h | 2008-12-26 21:00 | 2008-12-26 23:00 | 2h | 5.62d | 0d | Sergio Moreno | 2h | 1.6h | 200 | 160 |
| 24 | 1.2.8 | Tabla de Hechos: Pedidos | 5h | 2008-12-27 20:00 A | 2008-12-29 22:00 A | 23 | 100% |  | 2008-12-27 20:00 | 2008-12-29 22:00 | 5h |  |  | Sergio Moreno | 5h | 5h | 500 | 500 |

Notes:
- 18: hubo un atraso debido a que no se proporciono la informacion correcta en una de las tablas y esto provoco que se tenga que ir nuevamente a hacer el diseno de extraccion de esta nueva tabla
- 19: se tienen algunas dudas que deben ser aclaradas antes del diseno de las dimensiones correspondientes / se evidencio que en los pedidos no se estaba registrando el sector, por lo que se tiene que disenar un proceso adicional de reconstruccion de información historica a traves de iuna tabla adicional que si contiene el sector por fecha, (para la información de aquí atrás), en cuanto a la indformacion generada de aquí adelante, se hablo con el resposable de sistemas para que se corrja la falta de este dato en los pedidos, el mismo se comprometio a corregirlo en la semana del 22 al 27 de diciembre.
- 21: Se esta esperando que en el sistema principal para poder identificar jerarquia de supervisor vs. vendedor
- 22: Existían una duda con un campo repetido (consignación, crédito o facturado) que se aclaró el 27 de diciembre.
- 23: Se esta esperando que en el sistema principal para poder identificar jerarquia de supervisor vs. vendedor

| ID | WBS | Task | Duration | Start | Finish | Predecessors | Complete | Remaining | Baseline start | Baseline finish | Baseline duration | Total slack | Free slack | Resources | Work | Actual work | Cost | Actual cost |
| --- | --- | --- | --- | --- | --- | --- | --- | --- | --- | --- | --- | --- | --- | --- | --- | --- | --- | --- |
| 25 | 1.3 | **Diseño del cargado de datos** | 1d | 2008-12-29 22:00 A | 2009-01-01 21:00 A |  | 100% |  | 2008-12-29 22:00 | 2009-01-01 23:00 | 1.25d |  |  | Sergio Moreno | 16h | 16h | 1,600 | 1,600 |
| 26 | 1.3.1 | Cubo: PEDIDOS | 5h | 2008-12-29 22:00 A | 2008-12-31 21:00 A | 16 | 100% |  | 2008-12-29 22:00 | 2008-12-31 21:00 | 5h |  |  | Sergio Moreno | 5h | 5h | 500 | 500 |
| 27 | 1.3.2 | Medida Cantidad de Pedidos | 1h | 2008-12-31 21:00 A | 2008-12-31 22:00 A | 26 | 100% |  | 2008-12-31 21:00 | 2008-12-31 22:00 | 1h |  |  | Sergio Moreno | 1h | 1h | 100 | 100 |
| 28 | 1.3.3 | Medida Cantidad de clientes | 1h | 2008-12-31 22:00 A | 2008-12-31 23:00 A | 27 | 100% |  | 2008-12-31 22:00 | 2009-01-01 21:00 | 2h |  |  | Sergio Moreno | 1h | 1h | 100 | 100 |
| 29 | 1.3.4 | Medida Monto de los pedidos | 1h | 2009-01-01 20:00 A | 2009-01-01 21:00 A | 28 | 100% |  | 2009-01-01 21:00 | 2009-01-01 23:00 | 2h |  |  | Sergio Moreno | 1h | 1h | 100 | 100 |
| 30 | 1.4 | **Diseño de Informes en excel** | 0.25d | 2009-01-01 21:00 A | 2009-01-01 23:00 A |  | 100% |  | 2009-01-02 20:00 | 2009-01-02 22:00 | 0.25d |  |  | Sergio Moreno | 4h | 4h | 400 | 400 |
| 31 | 1.4.1 | Layout de ejemplo | 2h | 2009-01-01 21:00 A | 2009-01-01 23:00 A | 29 | 100% |  | 2009-01-02 20:00 | 2009-01-02 22:00 | 2h |  |  | Sergio Moreno | 2h | 2h | 200 | 200 |
| 32 | 1.5 | **Creacion de reportes adicionales en Reporting Services** | 0.75d | 2009-01-02 20:00 | 2009-01-03 23:00 |  |  |  | 2009-01-02 22:00 | 2009-01-07 22:00 | 1.5d | 0.7d |  | Sergio Moreno | 12h |  | 1,200 |  |
| 33 | 1.5.1 | Informe Clientes por fecha | 2h | 2009-01-02 20:00 | 2009-01-02 22:00 | 31 |  |  | 2009-01-02 22:00 | 2009-01-03 23:00 | 4h | 0.7d | 0d | Sergio Moreno | 2h |  | 200 |  |
| 34 | 1.5.2 | Informe a medida 2 | 2h | 2009-01-02 22:00 | 2009-01-03 21:00 | 33 |  |  | 2009-01-05 20:00 | 2009-01-06 21:00 | 4h | 0.7d | 0d | Sergio Moreno | 2h |  | 200 |  |
| 35 | 1.5.3 | Informe a medida 3 | 2h | 2009-01-03 21:00 | 2009-01-03 23:00 | 34 |  |  | 2009-01-06 21:00 | 2009-01-07 22:00 | 4h | 0.7d | 0d | Sergio Moreno | 2h |  | 200 |  |
| 36 | 1.6 | Instalacion y configuracion del nuevo servidor | 8h | 2009-01-05 20:00 A | 2009-01-07 22:00 | 35 | 70% | 2.4h | 2009-01-07 22:00 | 2009-01-10 21:00 | 8h | 0d |  | Sergio Moreno | 8h | 5.6h | 800 | 560 |
| 37 | 1.7 | Preparacion de Manual y Presentacion a los usuarios | 10h | 2009-01-07 22:00 | 2009-01-10 23:00 | 36 |  |  | 2009-01-10 21:00 | 2009-01-15 21:00 | 12h | 0d |  | Sergio Moreno | 10h |  | 1,000 |  |
| 38 | 1.8 | Presentacion y entrega de las capacidades de la nueva herramienta | 1h | 2009-01-12 20:00 | 2009-01-12 21:00 | 37 |  |  | 2009-01-15 21:00 | 2009-01-15 22:00 | 1h | 0d |  | Sergio Moreno | 1h |  | 100 |  |
| 39 | 1.9 | Capacitacion a usuarios finales para explotacion usando Excel 2007 | 6h | 2009-01-12 21:00 | 2009-01-14 21:00 | 38 |  |  | 2009-01-24 22:00 | 2009-02-03 22:00 | 24h | 0d |  | Sergio Moreno | 6h |  | 600 |  |
| 40 | 1.10 | Capacitacion a sistemas para mantenimiento de los flujos | 8h | 2009-01-14 21:00 | 2009-01-16 23:00 | 39 |  |  | 2009-02-03 22:00 | 2009-02-07 22:00 | 12h | 0d |  | Sergio Moreno | 8h |  | 800 |  |

Notes:
- 27: se detecto que los datos historicos de los pedidos estaban incompletos en algunos meses / esto fue debido a que no se tuvo la prevision de verificar que no se sobreescribieran los datos al momento de hacer el backup / se debe notificar del problema
